# Simple Project Plan

Schedule from MS Project, 2016-09-23 to 2016-11-24, A marks actual dates.
Microsoft Corporation

## Calendars

- Padrão: Mon-Fri 09:00-12:00, 13:00-18:00; Sat-Sun off.

## Resources

| Resource |
| --- |
| R |
| Luis |
| Julio |
| Marcos |
| Gustavo |
| Everton |
| Luis Mauro |
| Pedro |
| v |

## Schedule

| ID | WBS | Task | Type | Duration | Start | Finish | Predecessors | Complete | Actual finish | Baseline start | Baseline finish | Baseline duration | Resources | Work | Actual work | Início Previsto | Término Previsto |
| --- | --- | --- | --- | --- | --- | --- | --- | --- | --- | --- | --- | --- | --- | --- | --- | --- | --- |
| 1 | 1 | **Desenvolvimento Front End** |  | 5d | 2016-09-23 A | 2016-09-29 |  | 100% | 2016-09-30 | 2016-09-23 | 2016-09-29 | 5d |  | 247.06h | 247.06h | Sex 23/09/16 | Qui 29/09/16 |
| 2 | 1.1 | Home Super Admin |  | 2d | 2016-09-23 A | 2016-09-26 A |  | 100% |  | 2016-09-23 | 2016-09-26 | 2d | Marcos | 16h | 16h | Sex 23/09/16 | Seg 26/09/16 |
| 3 | 1.2 | Login |  | 3d | 2016-09-27 A | 2016-09-29 A | 2 | 100% |  | 2016-09-27 | 2016-09-29 | 3d | Luis | 24h | 24h | Ter 27/09/16 | Qui 29/09/16 |
| 4 | 1.3 | Assinatura | milestone, manual | 0d | 2016-09-30 A | 2016-09-30 A | 3 | 100% |  | 2016-09-30 | 2016-09-30 |  | Gustavo |  |  | Sex 30/09/16 | Sex 30/09/16 |
| 5 | 1.4 | Cadastrar Crédito Cliente | manual | 1.18d | 2016-09-23 A | 2016-09-26 A |  | 100% |  | 2016-09-23 | 2016-09-26 | 1.18d | Julio | 9.41h | 9.41h | Sex 23/09/16 | Seg 26/09/16 |
| 6 | 1.5 | Relatório Vendas | manual | 1.18d | 2016-09-23 A | 2016-09-26 A |  | 100% |  | 2016-09-23 | 2016-09-26 | 1.18d | Everton | 9.41h | 9.41h | Sex 23/09/16 | Seg 26/09/16 |
| 7 | 1.6 | Venda | manual | 1.18d | 2016-09-23 A | 2016-09-26 A |  | 100% |  | 2016-09-23 | 2016-09-26 | 1.18d | Luis Mauro | 9.41h | 9.41h | Sex 23/09/16 | Seg 26/09/16 |
| 8 | 1.7 | Home Funcionário | manual | 1.18d | 2016-09-23 A | 2016-09-26 A |  | 100% |  | 2016-09-23 | 2016-09-26 | 1.18d | Pedro | 9.41h | 9.41h | Sex 23/09/16 | Seg 26/09/16 |
| 9 | 1.8 | Home Gerente | manual | 1.18d | 2016-09-23 A | 2016-09-26 A |  | 100% |  | 2016-09-23 | 2016-09-26 | 1.18d | Gustavo | 9.41h | 9.41h | Sex 23/09/16 | Seg 26/09/16 |
| 10 | 1.9 | Relatório Cliente | manual | 1.18d | 2016-09-23 A | 2016-09-26 A |  | 100% |  | 2016-09-23 | 2016-09-26 | 1.18d | Julio | 9.41h | 9.41h | Sex 23/09/16 | Seg 26/09/16 |
| 11 | 1.10 | Cadastro Rede | manual | 1.18d | 2016-09-23 A | 2016-09-26 A |  | 100% |  | 2016-09-23 | 2016-09-26 | 1.18d | Julio | 9.41h | 9.41h | Sex 23/09/16 | Seg 26/09/16 |
| 12 | 1.11 | Caixa Final | manual | 1.18d | 2016-09-23 A | 2016-09-26 A |  | 100% |  | 2016-09-23 | 2016-09-26 | 1.18d | Everton | 9.41h | 9.41h | Sex 23/09/16 | Seg 26/09/16 |
| 13 | 1.12 | Estoque | manual | 1.18d | 2016-09-23 A | 2016-09-26 A |  | 100% |  | 2016-09-23 | 2016-09-26 | 1.18d | Gustavo | 9.41h | 9.41h | Sex 23/09/16 | Seg 26/09/16 |
| 14 | 1.13 | Relatório Medicamento | manual | 1.18d | 2016-09-23 A | 2016-09-26 A |  | 100% |  | 2016-09-23 | 2016-09-26 | 1.18d | Pedro | 9.41h | 9.41h | Sex 23/09/16 | Seg 26/09/16 |
| 15 | 1.14 | Listar Medicamentos | manual | 1.18d | 2016-09-23 A | 2016-09-26 A |  | 100% |  | 2016-09-23 | 2016-09-26 | 1.18d | Luis | 9.41h | 9.41h | Sex 23/09/16 | Seg 26/09/16 |
| 16 | 1.15 | Listar Funcionários | manual | 1.18d | 2016-09-23 A | 2016-09-26 A |  | 100% |  | 2016-09-23 | 2016-09-26 | 1.18d | Everton | 9.41h | 9.41h | Sex 23/09/16 | Seg 26/09/16 |
| 17 | 1.16 | Listar Lojas | manual | 1.18d | 2016-09-23 A | 2016-09-26 A |  | 100% |  | 2016-09-23 | 2016-09-26 | 1.18d | Julio | 9.41h | 9.41h | Sex 23/09/16 | Seg 26/09/16 |
| 18 | 1.17 | Cadastrar Medicamentos | manual | 1.18d | 2016-09-23 A | 2016-09-26 A |  | 100% |  | 2016-09-23 | 2016-09-26 | 1.18d | Julio | 9.41h | 9.41h | Sex 23/09/16 | Seg 26/09/16 |
| 19 | 1.18 | Cadastrar Funcionário Admin | manual | 1.18d | 2016-09-23 A | 2016-09-26 A |  | 100% |  | 2016-09-23 | 2016-09-26 | 1.18d | Everton | 9.41h | 9.41h | Sex 23/09/16 | Seg 26/09/16 |
| 20 | 1.19 | Cadastrar Fornecedor | manual | 1.18d | 2016-09-23 A | 2016-09-26 A |  | 100% |  | 2016-09-23 | 2016-09-26 | 1.18d | Julio | 9.41h | 9.41h | Sex 23/09/16 | Seg 26/09/16 |
| 21 | 1.20 | Cadastrar Loja | manual | 1.18d | 2016-09-23 A | 2016-09-26 A |  | 100% |  | 2016-09-23 | 2016-09-26 | 1.18d | Julio | 9.41h | 9.41h | Sex 23/09/16 | Seg 26/09/16 |
| 22 | 1.21 | Cadastrar Cliente | manual | 1.18d | 2016-09-23 A | 2016-09-26 A |  | 100% |  | 2016-09-23 | 2016-09-26 | 1.18d | Marcos | 9.41h | 9.41h | Sex 23/09/16 | Seg 26/09/16 |
| 23 | 1.22 | Cadastrar Cliente Admin | manual | 1.18d | 2016-09-23 A | 2016-09-26 A |  | 100% |  | 2016-09-23 | 2016-09-26 | 1.18d | Julio | 9.41h | 9.41h | Sex 23/09/16 | Seg 26/09/16 |
| 24 | 1.23 | Cadastrar Funcionário | manual | 1.18d | 2016-09-23 A | 2016-09-26 A |  | 100% |  | 2016-09-23 | 2016-09-26 | 1.18d | Julio | 9.41h | 9.41h | Sex 23/09/16 | Seg 26/09/16 |
| 25 | 1.24 | Cadastrar Tipo | manual | 1.18d | 2016-09-23 A | 2016-09-26 A |  | 100% |  | 2016-09-23 | 2016-09-26 | 1.18d | Pedro | 9.41h | 9.41h | Sex 23/09/16 | Seg 26/09/16 |
| 26 | 1.25 | Pagina Institucional - Index | manual | 1.18d | 2016-09-23 A | 2016-09-26 A |  | 100% |  | 2016-09-23 | 2016-09-26 | 1.18d | Marcos | 9.41h | 9.41h | Sex 23/09/16 | Seg 26/09/16 |

Notes:
- 1: Esta é uma tarefa de resumo. Use tarefas de resumo para ajudar a organizar seu projeto em seções.
- 4: Esta é uma tarefa de marco. Defina uma tarefa com duração de 0d para marcar um evento no seu projeto.

| ID | WBS | Task | Type | Duration | Start | Finish | Complete | Remaining | Baseline start | Baseline finish | Baseline duration | Resources | Work | Actual work | Início Previsto | Término Previsto |
| --- | --- | --- | --- | --- | --- | --- | --- | --- | --- | --- | --- | --- | --- | --- | --- | --- |
| 27 | 2 | **Desenvolvimento Back End** |  | 44d | 2016-09-24 A | 2016-11-23 | 23% | 33.72d | 2016-09-30 | 2016-11-30 | 44d |  | 1528h | 467.2h | Sex 30/09/16 | Qua 28/11/16 |
| 28 | 2.1 | Home Super Admin | manual | 12d | 2016-11-05 A | 2016-11-21 | 25% | 9d | 2016-10-06 | 2016-10-21 | 12d | Marcos | 96h | 24h | 05/11/16 | 15/11/16 |
| 29 | 2.2 | Login | manual | 5d | 2016-11-05 A | 2016-11-10 | 50% | 2.5d | 2016-10-24 | 2016-10-28 | 5d | Marcos | 40h | 20h | 05/11/16 | 12/11/16 |
| 30 | 2.3 | Assinatura | manual | 3d | 2016-11-01 A | 2016-11-03 A | 100% |  | 2016-10-31 | 2016-11-04 | 5d | Marcos | 24h | 24h | 01/11/16 | 03/11/16 |
| 31 | 2.4 | Cadastrar Crédito Cliente | manual | 6d | 2016-11-05 A | 2016-11-11 | 10% | 5.4d | 2016-10-14 | 2016-10-21 | 6d | Everton | 48h | 4.8h | 05/11/16 | 13/11/16 |
| 32 | 2.5 | Relatório Vendas | manual | 6d | 2016-11-05 A | 2016-11-11 | 10% | 5.4d | 2016-10-14 | 2016-10-21 | 6d | Gustavo | 48h | 4.8h | 05/11/16 | 13/11/16 |
| 33 | 2.6 | Venda | manual | 6d | 2016-11-05 A | 2016-11-11 | 20% | 4.8d | 2016-10-14 | 2016-10-21 | 6d | Julio | 48h | 9.6h | 05/11/16 | 13/11/16 |
| 34 | 2.7 | Home Funcionário | manual | 5d | 2016-09-24 | 2016-09-29 |  |  | 2016-11-07 | 2016-11-11 | 5d | Marcos | 40h |  | 15/11/16 | 16/11/16 |
| 35 | 2.8 | Home Gerente | manual | 3d | 2016-09-24 | 2016-09-27 |  |  | 2016-11-14 | 2016-11-16 | 3d | Marcos | 24h |  | 16/11/16 | 17/11/16 |
| 36 | 2.9 | Relatório Cliente | manual | 5d | 2016-11-05 A | 2016-11-10 | 15% | 4.25d | 2016-11-16 | 2016-11-22 | 5d | Luis | 40h | 6h | 05/11/16 | 15/11/16 |
| 37 | 2.10 | Cadastro Rede | manual | 19d | 2016-10-10 A | 2016-11-03 A | 100% |  | 2016-10-10 | 2016-10-16 | 6d | Luis Mauro; Marcos | 296h | 296h | 10/10/16 | 03/11/16 |
| 38 | 2.11 | Caixa Final | manual | 15d | 2016-11-05 A | 2016-11-24 | 5% | 14.25d | 2016-10-10 | 2016-10-28 | 15d | Pedro | 120h | 6h | 05/11/16 | 15/11/16 |
| 39 | 2.12 | Estoque | manual | 6d | 2016-11-05 A | 2016-11-11 | 50% | 3d | 2016-10-18 | 2016-10-25 | 6d | Luis Mauro | 48h | 24h | 05/11/16 | 13/11/16 |
| 40 | 2.13 | Relatório Medicamento | manual | 4d | 2016-09-24 | 2016-09-28 |  |  | 2016-11-17 | 2016-11-22 | 4d | Marcos | 32h |  | 17/11/16 | 19/11/16 |
| 41 | 2.14 | Listar Medicamentos | manual | 3d | 2016-09-24 | 2016-09-27 |  |  | 2016-11-23 | 2016-11-25 | 3d | Marcos | 24h |  | 19/11/16 | 21/11/16 |
| 42 | 2.15 | Listar Funcionários | manual | 4d | 2016-09-24 | 2016-09-28 |  |  | 2016-10-26 | 2016-10-31 | 4d | Luis Mauro | 32h |  | 14/11/16 | 17/11/16 |
| 43 | 2.16 | Listar Lojas | manual | 4d | 2016-09-24 | 2016-09-28 |  |  | 2016-11-01 | 2016-11-04 | 4d | Luis Mauro | 32h |  | 17/11/16 | 18/11/16 |
| 44 | 2.17 | Cadastrar Medicamentos | manual | 3d | 2016-09-24 | 2016-09-27 |  |  | 2016-11-26 | 2016-11-29 | 3d | Marcos | 24h |  | 21/11/16 | 22/11/16 |
| 45 | 2.18 | Cadastrar Funcionário Admin | manual | 2d | 2016-11-05 | 2016-11-07 |  |  | 2016-11-29 | 2016-11-30 | 2d | Luis | 16h |  | 05/11/16 | 13/11/16 |
| 46 | 2.19 | Cadastrar Fornecedor | manual | 4d | 2016-09-24 | 2016-09-28 |  |  | 2016-11-07 | 2016-11-10 | 4d | Luis Mauro | 32h |  | 18/11/16 | 19/11/16 |
| 47 | 2.20 | Cadastrar Loja | manual | 6d | 2016-09-24 | 2016-09-30 |  |  | 2016-11-23 | 2016-11-30 | 6d | Luis | 48h |  | 16/11/16 | 19/11/16 |
| 48 | 2.21 | Cadastrar Cliente | manual | 6d | 2016-10-28 A | 2016-11-04 A | 100% |  | 2016-10-24 | 2016-11-04 | 10d | Marcos | 48h | 48h | 28/10/16 | 04/11/16 |
| 49 | 2.22 | Cadastrar Cliente Admin | manual | 10d | 2016-09-24 | 2016-10-06 |  |  | 2016-10-24 | 2016-11-04 | 10d | Gustavo | 80h |  | 13/10/16 | 19/11/16 |
| 50 | 2.23 | Cadastrar Funcionário | manual | 10d | 2016-09-24 | 2016-10-06 |  |  | 2016-10-24 | 2016-11-04 | 10d | Julio | 80h |  | 13/11/16 | 19/11/16 |
| 51 | 2.24 | Cadastrar Tipo | manual | 10d | 2016-09-24 | 2016-10-06 |  |  | 2016-11-05 | 2016-11-17 | 10d | Everton | 80h |  | 13/11/16 | 19/11/16 |
| 52 | 2.25 | Pagina Institucional - Index | manual | 16d | 2016-09-24 | 2016-10-14 |  |  | 2016-10-28 | 2016-11-18 | 16d | Pedro | 128h |  | 15/10/16 | 19/11/16 |

Notes:
- 28: Tarefas com um um pino próximo a eles são tarefas agendadas manualmente. Use-as quando você não quer que o Project mova uma tarefa. Voce também pode digitar texto livre nos campos de duração, início e encerramento ou deixar em branco se ainda não tem toda a informação.
